# AwakeDrive (깨어있는 드라이브) 일정

Schedule from GanttProject, 2026-10-26 to 2026-12-04.
sleepissue
Pleos Connect 앱 공모전. 기준: 상세기획서 v4·SRS v0.2·CLAUDE.md 2장 일정. 역할은 데이터 흐름 순 분담안. 11/9 갱신: 단계 전환·DemoPlayer는 실제 구현한 1번으로 변경. 팀장은 4번 겸직으로 가정. 모든 날을 작업일로 둠(주말 포함).

## Calendars

- Project calendar: Mon-Sun working.

## Resources

| Resource |
| --- |
| 1번 차량 신호·운행 상태 |
| 2번 졸음 판단 엔진 |
| 3번 개입·음성 확인 |
| 4번 예보·쉼터·휴식(팀장 가정) |
| 5번 화면·데모·시연 |

## Schedule

| ID | WBS | Task | Type | Duration | Start | Finish | Predecessors | Complete | Resources |
| --- | --- | --- | --- | --- | --- | --- | --- | --- | --- |
| 1 | 1 | **0. 준비 (환경·설명회·SRS·인터페이스)** |  | 12d | 2026-10-26 | 2026-11-06 |  | 90% |  |
| 2 | 1.1 | 개발환경 세팅·GitHub 저장소 |  | 2d | 2026-10-26 | 2026-10-27 |  | 100% | 1번 차량 신호·운행 상태; 2번 졸음 판단 엔진; 3번 개입·음성 확인; 4번 예보·쉼터·휴식(팀장 가정); 5번 화면·데모·시연 |
| 3 | 1.2 | 설명회 참석·질문 |  | 1d | 2026-10-28 | 2026-10-28 |  | 100% | 1번 차량 신호·운행 상태; 2번 졸음 판단 엔진; 3번 개입·음성 확인; 4번 예보·쉼터·휴식(팀장 가정); 5번 화면·데모·시연 |
| 4 | 1.3 | SRS·TC v0.1 작성 |  | 1d | 2026-10-29 | 2026-10-29 | 3 | 100% | 4번 예보·쉼터·휴식(팀장 가정) [50%] |
| 5 | 1.4 | SRS v0.2 검토·수정 |  | 3d | 2026-10-30 | 2026-11-01 | 4 | 100% | 4번 예보·쉼터·휴식(팀장 가정) [50%] |
| 6 | 1.5 | Pleos 메일 문의 발송 |  | 1d | 2026-10-30 | 2026-10-30 | 3FS+1d | 100% | 4번 예보·쉼터·휴식(팀장 가정) [10%] |
| 7 | 1.6 | 에뮬레이터 신호·API 동작 확인 |  | 4d | 2026-10-29 | 2026-11-01 | 3 | 70% | 1번 차량 신호·운행 상태; 3번 개입·음성 확인; 4번 예보·쉼터·휴식(팀장 가정) [40%] |
| 8 | 1.7 | 데모 시나리오 형식 확정 (MSG-11) |  | 3d | 2026-10-30 | 2026-11-01 | 4 | 80% | 2번 졸음 판단 엔진 [50%]; 5번 화면·데모·시연; 1번 차량 신호·운행 상태 [50%] |
| 9 | 1.8 | 인터페이스 data class 커밋 (MSG-01~15) |  | 1d | 2026-11-02 | 2026-11-02 | 5, 7, 8 | 100% | 1번 차량 신호·운행 상태; 2번 졸음 판단 엔진; 3번 개입·음성 확인; 4번 예보·쉼터·휴식(팀장 가정); 5번 화면·데모·시연 |
| 10 | 1.9 | 메일 답변 수신 (목표일) | milestone | 0d | 2026-11-05 | 2026-11-05 | 6FS+7d | 100% |  |
| 11 | 2 | **1. 1차 MVP 구현 (11/3~11/10 동결)** |  | 7d | 2026-11-03 | 2026-11-09 |  | 80% |  |
| 12 | 2.1 | [1번] 신호 허브·단위 변환 (SIG) |  | 3d | 2026-11-03 | 2026-11-05 | 9 | 90% | 1번 차량 신호·운행 상태 |
| 13 | 2.2 | [1번] 운행 규칙 TripRules (정차·연속 운전·24시간 누적·운행 시작) |  | 2d | 2026-11-06 | 2026-11-07 | 12 | 100% | 1번 차량 신호·운행 상태 |
| 14 | 2.3 | [1번] 상태 저장·복원·부팅·감시 포그라운드 서비스 |  | 1d | 2026-11-08 | 2026-11-08 | 10, 13 | 80% | 1번 차량 신호·운행 상태 |
| 15 | 2.4 | [2번] 게이트·조향 지표 3개 (FAT_001~011) |  | 2d | 2026-11-03 | 2026-11-04 | 9 | 100% | 2번 졸음 판단 엔진 |
| 16 | 2.5 | [2번] 위험 점수·맥락 가중·3분 지수평균 (FAT_012~020) |  | 1d | 2026-11-05 | 2026-11-05 | 15 | 100% | 2번 졸음 판단 엔진 |
| 17 | 2.6 | [2번] 기준선·출발 피로 (BSL_003~007) |  | 1d | 2026-11-06 | 2026-11-06 | 16 | 100% | 2번 졸음 판단 엔진 |
| 18 | 2.7 | [2번] 패턴 분류·안전 우회 (PAT) |  | 1d | 2026-11-07 | 2026-11-07 | 17 | 100% | 2번 졸음 판단 엔진 |
| 19 | 2.8 | [2번] 보조 주행 판정 (AST) |  | 1d | 2026-11-08 | 2026-11-08 | 18 | 100% | 2번 졸음 판단 엔진 |
| 20 | 2.9 | [3번] TTS·STT ON_DEVICE·의도 표·대체 동작 (VOI) |  | 2d | 2026-11-03 | 2026-11-04 | 7, 9 | 90% | 3번 개입·음성 확인 |
| 21 | 2.10 | [3번] 음성·동승자 확인, 대답 시간 판정 (CHK) |  | 2d | 2026-11-05 | 2026-11-06 | 20 | 80% | 3번 개입·음성 확인 |
| 22 | 2.11 | [1번] 단계 전환 상태 머신 (INT) |  | 2d | 2026-11-07 | 2026-11-08 | 16, 21 | 100% | 1번 차량 신호·운행 상태 |
| 23 | 2.12 | [4번] 예보 엔진 (FCS) |  | 2d | 2026-11-03 | 2026-11-04 | 9 | 100% | 4번 예보·쉼터·휴식(팀장 가정) |
| 24 | 2.13 | [4번] 쉼터 데이터 내장 (졸음쉼터 + 휴게소 시도) |  | 1d | 2026-11-05 | 2026-11-05 | 23 | 100% | 4번 예보·쉼터·휴식(팀장 가정) |
| 25 | 2.14 | [4번] 쉼터 선택·경유지 (RST_002~006) |  | 1d | 2026-11-06 | 2026-11-06 | 12, 24 | 100% | 4번 예보·쉼터·휴식(팀장 가정) |
| 26 | 2.15 | [4번] 운전석 통풍 (CLM) |  | 1d | 2026-11-07 | 2026-11-07 | 10, 25 | 100% | 4번 예보·쉼터·휴식(팀장 가정) |
| 27 | 2.16 | [4번] 휴식 인증·파워냅·보상 (RES·RWD) |  | 1d | 2026-11-08 | 2026-11-08 | 13, 26 | 100% | 4번 예보·쉼터·휴식(팀장 가정) |
| 28 | 2.17 | [5번] 화면 시안 3장 (주행·단계 알림·휴식) |  | 2d | 2026-11-03 | 2026-11-04 | 9 | 50% | 5번 화면·데모·시연 |
| 29 | 2.18 | 화면 시안 완료 | milestone | 0d | 2026-11-05 | 2026-11-05 | 28 |  |  |
| 30 | 2.19 | [5번] 데모 시나리오 6종 합성 (src/tools-py) |  | 2d | 2026-11-05 | 2026-11-06 | 8, 28 | 80% | 5번 화면·데모·시연 [50%] |
| 31 | 2.20 | [1번] DemoPlayer (구간 배속·질문 중 1배속·시동 끔) |  | 2d | 2026-11-07 | 2026-11-08 | 12, 30 | 80% | 1번 차량 신호·운행 상태 |
| 32 | 2.21 | [5번] Compose 화면 구현 (UI·신호 그래프·첫 실행 설정) |  | 4d | 2026-11-05 | 2026-11-08 | 29 | 70% | 5번 화면·데모·시연 [50%] |
| 33 | 2.22 | 1차 통합 (main 병합)·E2E 리허설 |  | 1d | 2026-11-09 | 2026-11-09 | 14, 19, 22, 27, 31, 32 | 20% | 1번 차량 신호·운행 상태; 2번 졸음 판단 엔진; 3번 개입·음성 확인; 4번 예보·쉼터·휴식(팀장 가정); 5번 화면·데모·시연 |
| 34 | 2.23 | MVP 동결 | milestone | 0d | 2026-11-10 | 2026-11-10 | 33 |  |  |

Notes:
- 2: Pleos Emulator v2.1.0, Android Studio Rabbit 1, sleepissue 저장소
- 3: 외부 API·공용망 사용 가능 확인. 나머지는 메일 문의
- 4: REQ 172·TC 172
- 5: 수정 방안 v0.2 반영 — REQ 194(신규 22, Deleted 1)
- 6: 메일 문의 1~10번(통풍·TTS/STT·절전·마이크·조향 주기·내비·심사·착석·포그라운드 서비스 유형·NaviHelper 단위)
- 7: SRS 8장 체크리스트: PERF_VEHICLE_SPEED 단위(m/s), 조향 갱신 주기, TTS·STT ON_DEVICE, 통풍 반영, NaviHelper 필드, 착석 좌석별, 주행 제한 시 데모 화면 잠김 / 11/9: 1번 Vehicle·Navi·AAOS 수신 실측(11/3 devlog, D·차속·크루즈·방향지시등·브레이크·실내온도·위치). 메일(11/5) 조향·속도 기본 1 Hz. TTS·STT·통풍 쓰기 실기 기록은 3·4번 확인 필요
- 8: 필수 8필드 + 선택 lat·lon + 파일 머리 speedSegments (REQ_DMO_001·002) / 11/9: 2번 형식 제안(docs/fatigue-engine/11, 11/7), 1번 schema(data/scenarios/demo.schema.json)·검증 PR #15. 담당 1·2·5번
- 9: 각자 '내보내는' 메시지를 먼저 커밋 → 받는 쪽은 가짜 값으로 개발 시작 / 11/9: 1·3·4번 11/4 main, 2번 11/7 main(#12)
- 10: 답에 따라 통풍(43번)·감시 서비스 유형(12번)·열린 기능(87번) 확정. 늦어지면 대체 동작으로 진행 / 11/9: 11/5 수신 — ADAS SDK 불가, 조향·속도 기본 1 Hz(같은 값 3초 생략), 화면 없는 FGS 가능 (docs/meetings/2026-11-05_Pleos_메일답변.md)
- 12: REQ_SIG_001~017, MSG-01·14. 차속 m/s→km/h(×3.6) / 11/9: main #6. 남음: SIG_001 실측 60초 TC, SIG_009 원천 Hz
- 13: REQ_TRP_005~008·010~012, MSG-08·15 / 11/9: main #6
- 14: REQ_TRP_001~004·009, PLT_012·013 (서비스 유형은 메일 답) / 11/9: Room 저장·복원 main #6. 감시 FGS·부팅 수신기는 PR #15 머지 대기
- 15: 목적지 없을 때 5분 규칙(FAT_004) 포함 / 11/9: main #12 (11/7)
- 16: 시나리오 1: K=1.15 → R=61.0 / 11/9: main #12 (11/7)
- 17: 1차는 평소의 나 대신 기본값과 비교 / 11/9: main #12 (11/7)
- 18: REQ_PAT_001~007 / 11/9: REQ_PAT_001~003·005 main #12. 004·006·007은 1번 InterventionPolicy. PAT_004 딴짓 기록 미구현
- 19: 조향 null → 보조 주행, 재개 → 일반(AST_003), 크루즈 null(AST_008) / 11/9: AST_001·003·004·006~008 main #12. AST_005는 1번 PolicyInterventionManager. AST_002는 2차
- 20: REQ_VOI_001~008 / 11/9: VoiceAgent·SpeechAgent·ON_DEVICE main #8. 개입 연결은 PR #13
- 21: REQ_CHK_001~013, 보류 최대 20초 / 11/9: CheckManager·PassengerCheckFlow main #8. 개입 요청 연결 PR #13 머지 대기
- 22: REQ_INT_001~015 (위험 점수는 2번 21번 작업에서 받음) / 11/9: 1번이 구현(main #6, 11/4). 3번 쪽 단계 전환은 통합 때 제거. INT_015 비활성(Should)
- 23: 연속 운전 시간 기준, 말투(분/시각), 재계산 6시점 / 11/9: main #7
- 24: REQ_RST_001. 휴게소 좌표 없으면 2차 / 11/9: 졸음쉼터 253 + 휴게소 215 = 468곳 내장 (main #9)
- 25: NaviState(1번)·addWaypoint / 11/9: main #9
- 26: 호출 → 재읽기 → 미반영 시 음성 안내 (메일 답 반영) / 11/9: main #10 (호출 뒤 다시 읽어 반영 확인, 안 되면 음성 안내)
- 27: 정차 시간 규칙(1번 11번 작업) 사용 / 11/9: main #11. 개입 연결(라우터·RES_011 엔진 초기화·예보 재계산)은 feat/rest-wiring PR
- 28: 11/9: 저장소에 시안 파일 없음. PR #14에 주행·알림·휴식 Compose 화면 있음 → 5번 확인 필요
- 29: CLAUDE.md 2장 일정 11/5
- 30: 졸음 시나리오는 순간 점수 70 이상으로(FAT_020 비고) / 11/9: data/scenarios 6종 JSON PR #14. 형식 검증 PR #15
- 31: REQ_DMO_002~006 / 11/9: 1번이 ScenarioDemoPlayer·DemoJsonLoader 구현(PR #15). 담당 1번으로 확정
- 32: REQ_UI_001~013 / 11/9: PR #14 — 주행·알림·휴식·첫 실행·리포트 화면, 신호 그래프, FatigueSnapshot 연결. 주행 제한(UI_009)·실제 매니저 연결 확인 필요
- 33: TC_PRD_001~013 시나리오 1회씩 / 11/9: rest-wiring에 main 합침·RES_011 연결. 남음: PR 머지(#15→rest-wiring→#13→#14), 라우터 단일화, 감시 서비스 한 곳 조립, TC_PRD 리허설
- 34: 이후 새 기능 금지, 버그 수정만

| ID | WBS | Task | Type | Duration | Start | Finish | Predecessors | Resources |
| --- | --- | --- | --- | --- | --- | --- | --- | --- |
| 35 | 3 | **2. 1차 접수 준비 (11/10~11/15)** |  | 5d | 2026-11-10 | 2026-11-14 |  |  |
| 36 | 3.1 | 버그 수정·TC 실행 결과 기록 |  | 3d | 2026-11-10 | 2026-11-12 | 34 | 1번 차량 신호·운행 상태; 2번 졸음 판단 엔진; 3번 개입·음성 확인; 4번 예보·쉼터·휴식(팀장 가정) [50%] |
| 37 | 3.2 | [5번] 시연 영상 촬영 (2분 30초, OBS) |  | 2d | 2026-11-11 | 2026-11-12 | 34FS+1d | 5번 화면·데모·시연 |
| 38 | 3.3 | [5번] 영상 편집·숏폼 |  | 1d | 2026-11-13 | 2026-11-13 | 37 | 5번 화면·데모·시연 |
| 39 | 3.4 | [1번] README·릴리스 APK |  | 1d | 2026-11-13 | 2026-11-13 | 36 | 1번 차량 신호·운행 상태 |
| 40 | 3.5 | [4번] 접수 양식 최종본 |  | 3d | 2026-11-11 | 2026-11-13 | 34FS+1d | 4번 예보·쉼터·휴식(팀장 가정) [50%] |
| 41 | 3.6 | 1차 제출 | milestone | 0d | 2026-11-14 | 2026-11-14 | 38, 39, 40 |  |
| 42 | 3.7 | 접수 마감 (11/15 23:59) | milestone | 0d | 2026-11-15 | 2026-11-15 | 41FS+1d |  |
| 43 | 4 | **3. 2차 개선·PT (11/16~12/4)** |  | 19d | 2026-11-16 | 2026-12-04 |  |  |
| 44 | 4.1 | 1차 결과 발표 | milestone | 0d | 2026-11-23 | 2026-11-23 | 41FS+9d |  |
| 45 | 4.2 | [2번] 평소의 나 기준선 (BSL_001·002) |  | 5d | 2026-11-16 | 2026-11-20 | 41FS+2d | 2번 졸음 판단 엔진 |
| 46 | 4.3 | [2번] 조향 모양 보조 주행 추정 (AST_002) |  | 4d | 2026-11-21 | 2026-11-24 | 45 | 2번 졸음 판단 엔진 |
| 47 | 4.4 | [4번] 개인 졸음 시점·개인 예보 (FCS_002) |  | 4d | 2026-11-16 | 2026-11-19 | 41FS+2d | 4번 예보·쉼터·휴식(팀장 가정) |
| 48 | 4.5 | [4번] 휴게소 데이터 (1차에서 못 했으면) |  | 4d | 2026-11-20 | 2026-11-23 | 47 | 4번 예보·쉼터·휴식(팀장 가정) |
| 49 | 4.6 | [3번] 대화 감지 개선·의도 표 확장 |  | 7d | 2026-11-16 | 2026-11-22 | 41FS+2d | 3번 개입·음성 확인 |
| 50 | 4.7 | [5번] 주행 리포트 화면 (UI_011·PRD_012) |  | 9d | 2026-11-16 | 2026-11-24 | 41FS+2d | 5번 화면·데모·시연 |
| 51 | 4.8 | [1번] 열린 기능 반영 (메일·설명회 결과, 확장 가정) |  | 12d | 2026-11-16 | 2026-11-27 | 10, 41FS+2d | 1번 차량 신호·운행 상태 |
| 52 | 4.9 | 2차 통합·TC 재시험 |  | 3d | 2026-11-28 | 2026-11-30 | 46, 48, 49, 50, 51 | 1번 차량 신호·운행 상태; 2번 졸음 판단 엔진; 3번 개입·음성 확인; 5번 화면·데모·시연 |
| 53 | 4.10 | [4번] PT 자료 작성 |  | 7d | 2026-11-24 | 2026-11-30 | 44FS+1d, 48 | 4번 예보·쉼터·휴식(팀장 가정) |
| 54 | 4.11 | PT 리허설 |  | 2d | 2026-12-01 | 2026-12-02 | 52, 53 | 1번 차량 신호·운행 상태; 2번 졸음 판단 엔진; 3번 개입·음성 확인; 4번 예보·쉼터·휴식(팀장 가정); 5번 화면·데모·시연 |
| 55 | 4.12 | 2차 PT |  | 2d | 2026-12-03 | 2026-12-04 | 54 | 1번 차량 신호·운행 상태; 2번 졸음 판단 엔진; 3번 개입·음성 확인; 4번 예보·쉼터·휴식(팀장 가정); 5번 화면·데모·시연 |

Notes:
- 36: Test Case 시트 H~O열 입력, RTM 확인
- 37: 화면 + 시스템 오디오, 대답은 녹화 중 실제 마이크로
- 39: REQ_PLT_011, apk/팀명_AwakeDrive_release.apk
- 40: 팀장 업무(4번 겸직 가정)
- 42: 버퍼 1일
- 46: [가설] 실차 검증 필요
- 51: LFA·LKA·핸즈온·DAW·진동 등 열린 것만
- 53: 팀장 업무(4번 겸직 가정), 전원 검토
- 55: 12/3~12/4
